# Development and Deployment of a Music Streaming Platform

Schedule from MS Project XML, 2026-08-17 to 2027-01-15.
Class 01 - Group 04

## Calendars

- Standard: Mon-Fri 08:00-12:00, 13:00-17:00; Sat-Sun off. Exceptions (off unless hours are given): 2026-09-02 (National Day), 2027-01-01 (New Year's Day).

## Resources

| Resource | Rate |
| --- | --- |
| Minh | 95454 |
| Đại | 95454 |
| Hiếu | 95454 |
| A | 95454 |
| Thu | 95454 |

## Schedule

| ID | WBS | Task | Type | Duration | Start | Finish | Predecessors | Resources | Work |
| --- | --- | --- | --- | --- | --- | --- | --- | --- | --- |
| 1 | 1 | **1 Music Streaming Platform** |  | 108d | 2026-08-17 | 2027-01-15 |  |  |  |
| 2 | 1.1 | **1.1 Requirements and Planning** |  | 24d | 2026-08-17 | 2026-09-18 |  |  |  |
| 3 | 1.1.1 | 1.1.1 Hold the kickoff and elicitation meetings with the Sponsor and Customer and develop the Project Charter |  | 9d | 2026-08-17 | 2026-08-27 |  | Minh | 72h |
| 4 | 1.1.2 | 1.1.2 Write the Software Requirements Specification (SRS) |  | 8d | 2026-08-28 | 2026-09-09 | 3 | Đại | 64h |
| 5 | 1.1.3 | 1.1.3 Build the Requirements Traceability Matrix (RTM) and acceptance criteria |  | 6d | 2026-08-28 | 2026-09-07 | 3 | A | 48h |
| 6 | 1.1.4 | 1.1.4 Write the Project Scope Statement, WBS and WBS Dictionary |  | 6d | 2026-08-28 | 2026-09-07 | 3 | Minh | 48h |
| 7 | 1.1.5 | 1.1.5 Research target users and competing apps |  | 8d | 2026-08-17 | 2026-08-26 |  | Thu | 64h |
| 8 | 1.1.6 | 1.1.6 Review the SRS, RTM and scope baseline with the Customer and Sponsor |  | 2d | 2026-09-14 | 2026-09-15 | 4FS+2d, 5FS+2d, 6FS+2d, 7 | Minh | 16h |
| 9 | 1.1.7 | 1.1.7 Revise the SRS and RTM for Customer sign-off |  | 2d | 2026-09-16 | 2026-09-17 | 8 | Đại | 16h |
| 10 | 1.1.8 | 1.1.8 SRS and RTM signed off by the Customer (milestone) | milestone | 0d | 2026-09-18 | 2026-09-18 | 9FS+1d |  |  |
| 11 | 1.2 | **1.2 System and Database Design** |  | 39d | 2026-08-27 | 2026-10-21 |  |  |  |
| 12 | 1.2.1 | 1.2.1 Evaluate the technology stack and design the system architecture |  | 8d | 2026-08-28 | 2026-09-09 | 3 | Hiếu | 64h |
| 13 | 1.2.2 | 1.2.2 Design the ER diagram and PostgreSQL schema |  | 7d | 2026-09-21 | 2026-09-29 | 10 | Đại | 56h |
| 14 | 1.2.3 | 1.2.3 Design the wireframes |  | 7d | 2026-08-27 | 2026-09-07 | 7 | Thu | 56h |
| 15 | 1.2.4 | 1.2.4 Design the high-fidelity mockups and clickable prototype |  | 10d | 2026-09-21 | 2026-10-02 | 14, 10 | Thu | 80h |
| 16 | 1.2.5 | 1.2.5 Write the detailed design (modules, class and sequence diagrams) |  | 7d | 2026-09-21 | 2026-09-29 | 12, 10 | Hiếu | 56h |
| 17 | 1.2.6 | 1.2.6 Define the general API specification (OpenAPI 3.0) shared by all developers |  | 5d | 2026-09-30 | 2026-10-06 | 13, 16 | Hiếu | 40h |
| 18 | 1.2.7 | 1.2.7 Set up the repository, CI/CD pipeline, staging, backups and CDN |  | 6d | 2026-10-13 | 2026-10-20 | 66FS+2d | A | 48h |
| 19 | 1.2.8 | 1.2.8 Review the system design and mockups with the Customer |  | 2d | 2026-10-09 | 2026-10-12 | 17FS+2d, 15FS+2d | Minh | 16h |
| 20 | 1.2.9 | 1.2.9 Revise the mockups and prototype |  | 3d | 2026-10-13 | 2026-10-15 | 19 | Thu | 24h |
| 21 | 1.2.10 | 1.2.10 Revise the system design and API specification |  | 2d | 2026-10-19 | 2026-10-20 | 19, 24 | Hiếu | 16h |
| 22 | 1.2.11 | 1.2.11 System design approved by the Customer (milestone) | milestone | 0d | 2026-10-21 | 2026-10-21 | 20FS+1d, 21FS+1d |  |  |
| 23 | 1.3 | **1.3 MVP Development** |  | 33d | 2026-10-07 | 2026-11-20 |  |  |  |
| 24 | 1.3.1 | 1.3.1 Develop the authentication and user API with unit tests |  | 8d | 2026-10-07 | 2026-10-16 | 17 | Hiếu | 64h |
| 25 | 1.3.2 | 1.3.2 Develop the music streaming API and CDN integration with unit tests |  | 8d | 2026-10-21 | 2026-10-30 | 24, 18 | Hiếu | 64h |
| 26 | 1.3.3 | 1.3.3 Develop the Live Premiere WebSocket service with unit tests |  | 9d | 2026-10-07 | 2026-10-19 | 17 | Đại | 72h |
| 27 | 1.3.4 | 1.3.4 Build the playback and Live Premiere screens with unit tests |  | 10d | 2026-10-22 | 2026-11-04 | 22 | Thu | 80h |
| 28 | 1.3.5 | 1.3.5 Test the MVP functions (integration testing) |  | 5d | 2026-11-05 | 2026-11-11 | 24, 25, 26, 27, 43 | A | 40h |
| 29 | 1.3.6 | 1.3.6 Demo the MVP to the Customer |  | 1d | 2026-11-12 | 2026-11-12 | 28 | Minh | 8h |
| 30 | 1.3.7 | 1.3.7 Fix MVP defects and demo feedback |  | 5d | 2026-11-16 | 2026-11-20 | 29, 33 | Hiếu | 40h |
| 31 | 1.3.8 | 1.3.8 MVP features completed internally (milestone) | milestone | 0d | 2026-11-20 | 2026-11-20 | 30 |  |  |

Notes:
- 3: A-01: assumes the Sponsor and the Customer are available for the kickoff and elicitation meetings on these dates.
- 8: A-02: assumes the Customer and the Sponsor are available for the review on these dates. Lag 2 days after 1.1.2-1.1.4: the documents are sent in advance so they can read them.
- 10: A-03: assumes the Customer signs off on this date. Lag 1 day after 1.1.7: the Customer checks the revised SRS and RTM.
- 18: A-14: assumes the cloud/CDN provider activates the accounts within 2 working days of the purchase (lag 2 days after 1.7.3).
- 19: A-05: assumes the Customer is available for the design review on these dates. Lag 2 days after 1.2.6 and 1.2.4: the design package is sent in advance.
- 22: A-05: assumes the Customer approves the revised design on this date (lag 1 day after 1.2.9 and 1.2.10).
- 29: A-06: assumes the Customer is available for the MVP demo on this date.

| ID | WBS | Task | Type | Duration | Start | Finish | Predecessors | Resources | Work |
| --- | --- | --- | --- | --- | --- | --- | --- | --- | --- |
| 32 | 1.4 | **1.4 Full Feature Development** |  | 35d | 2026-10-20 | 2026-12-07 |  |  |  |
| 33 | 1.4.1 | 1.4.1 Develop search, playlist, library and recommendation APIs with unit tests |  | 10d | 2026-11-02 | 2026-11-13 | 25 | Hiếu | 80h |
| 34 | 1.4.2 | 1.4.2 Develop favorites, comments, notification, admin and receipt-verification APIs with unit tests |  | 9d | 2026-10-20 | 2026-10-30 | 26 | Đại | 72h |
| 35 | 1.4.3 | 1.4.3 Build login, profile, search, playlist, library and social screens with unit tests |  | 10d | 2026-11-05 | 2026-11-18 | 27 | Thu | 80h |
| 36 | 1.4.4 | 1.4.4 Build offline download, video playback, in-app purchase and admin dashboard screens with unit tests |  | 10d | 2026-11-02 | 2026-11-13 | 34, 22 | Đại | 80h |
| 37 | 1.4.5 | 1.4.5 Test the full feature set (integration testing) |  | 5d | 2026-11-23 | 2026-11-27 | 33, 35, 36, 30 | A | 40h |
| 38 | 1.4.6 | 1.4.6 Demo all functions to the Customer and Sponsor |  | 1d | 2026-11-30 | 2026-11-30 | 37 | Minh | 8h |
| 39 | 1.4.7 | 1.4.7 Fix feature defects and demo feedback |  | 5d | 2026-12-01 | 2026-12-07 | 38 | Thu | 40h |
| 40 | 1.4.8 | 1.4.8 All functions complete (milestone) | milestone | 0d | 2026-12-07 | 2026-12-07 | 39 |  |  |
| 41 | 1.5 | **1.5 Testing and QA** |  | 89d | 2026-08-17 | 2026-12-18 |  |  |  |
| 42 | 1.5.1 | 1.5.1 Write the test plan and quality metrics |  | 5d | 2026-08-17 | 2026-08-21 |  | A | 40h |
| 43 | 1.5.2 | 1.5.2 Create the test case template and write the test cases from the RTM |  | 8d | 2026-09-21 | 2026-09-30 | 42, 10 | A | 64h |
| 44 | 1.5.3 | 1.5.3 Run load (9,000-15,000 users), security and device performance tests |  | 7d | 2026-11-12 | 2026-11-20 | 28 | A | 56h |
| 45 | 1.5.4 | 1.5.4 Fix the defects found in load, security and device testing |  | 5d | 2026-11-23 | 2026-11-27 | 44 | Đại | 40h |
| 46 | 1.5.5 | 1.5.5 Write the test summary report |  | 2d | 2026-12-08 | 2026-12-09 | 45, 39 | A | 16h |
| 47 | 1.5.6 | 1.5.6 Review the test summary report with the Customer |  | 1d | 2026-12-14 | 2026-12-14 | 46FS+2d | Minh | 8h |
| 48 | 1.5.7 | 1.5.7 Fix the defects raised in the test review |  | 4d | 2026-12-15 | 2026-12-18 | 47 | Hiếu | 32h |
| 49 | 1.5.8 | 1.5.8 Release candidate ready for Customer acceptance testing (milestone) | milestone | 0d | 2026-12-18 | 2026-12-18 | 48 |  |  |
| 50 | 1.6 | **1.6 Deployment and Closeout** |  | 28d | 2026-12-08 | 2027-01-15 |  |  |  |
| 51 | 1.6.1 | 1.6.1 Deploy the release candidate to staging |  | 2d | 2026-12-21 | 2026-12-22 | 49 | A | 16h |
| 52 | 1.6.2 | 1.6.2 Fix the defects reported by the Customer during UAT |  | 5d | 2026-12-25 | 2026-12-31 | 51FS+2d | Hiếu | 40h |
| 53 | 1.6.3 | 1.6.3 Customer acceptance sign-off after UAT (milestone) | milestone | 0d | 2027-01-04 | 2027-01-04 | 52FS+1d |  |  |
| 54 | 1.6.4 | 1.6.4 Deploy to production with monitoring and backups |  | 3d | 2027-01-05 | 2027-01-07 | 53 | A | 24h |
| 55 | 1.6.5 | 1.6.5 Provide post-release hypercare |  | 6d | 2027-01-08 | 2027-01-15 | 54 | Hiếu | 48h |
| 56 | 1.6.6 | 1.6.6 Submit the apps to the App Store and Google Play |  | 2d | 2027-01-08 | 2027-01-11 | 54 | Thu | 16h |
| 57 | 1.6.7 | 1.6.7 Train the Customer administrators |  | 2d | 2027-01-12 | 2027-01-13 | 56 | Thu | 16h |
| 58 | 1.6.8 | 1.6.8 Write the user guide, admin guide and release notes (Vietnamese/English) |  | 10d | 2026-12-08 | 2026-12-21 | 39 | Đại | 80h |
| 59 | 1.6.9 | 1.6.9 Write the deployment and operations documentation |  | 7d | 2026-12-23 | 2026-12-31 | 51 | A | 56h |
| 60 | 1.6.10 | 1.6.10 Review the handover deliverables with the Customer |  | 2d | 2027-01-06 | 2027-01-07 | 58FS+2d, 59FS+2d | Minh | 16h |
| 61 | 1.6.11 | 1.6.11 Revise the handover documents |  | 3d | 2027-01-08 | 2027-01-12 | 60 | Đại | 24h |
| 62 | 1.6.12 | 1.6.12 Apps published and deliverables handed over (milestone) | milestone | 0d | 2027-01-15 | 2027-01-15 | 56FS+3d, 57, 55, 61 |  |  |

Notes:
- 38: A-07: assumes the Customer and the Sponsor are available for the demo on this date.
- 47: A-08: assumes the Customer is available for the test report review on this date. Lag 2 days after 1.5.5: the report is sent in advance.
- 52: A-09: assumes the Customer performs UAT on staging during the lag after 1.6.1 and while the defects are fixed.
- 53: A-09: assumes the Customer finishes UAT and signs acceptance on this date (lag 1 day after 1.6.2 to retest the fixes).
- 57: A-10: assumes the Customer administrators are available for the training on these dates.
- 60: A-11: assumes the Customer is available for the handover review on these dates. Lag 2 days after 1.6.8 and 1.6.9: the documents are sent in advance.
- 62: A-11, A-13: assumes the Customer accepts the handover on this date and the App Store / Google Play review takes at most 3 working days (lag 3 days after 1.6.6).

| ID | WBS | Task | Type | Duration | Start | Finish | Predecessors | Resources | Work |
| --- | --- | --- | --- | --- | --- | --- | --- | --- | --- |
| 63 | 1.7 | **1.7 Project Management** |  | 87d | 2026-09-16 | 2027-01-15 |  |  |  |
| 64 | 1.7.1 | 1.7.1 Develop the Project Management Plan (schedule, cost baseline, risk, quality, communications and procurement plans) |  | 10d | 2026-09-16 | 2026-09-29 | 8 | Minh | 80h |
| 65 | 1.7.2 | 1.7.2 Project Management Plan approved by the Sponsor (milestone) | milestone | 0d | 2026-10-01 | 2026-10-01 | 64FS+2d |  |  |
| 66 | 1.7.3 | 1.7.3 Procure the cloud, CDN, test devices and test tools |  | 5d | 2026-10-02 | 2026-10-08 | 65 | Minh | 40h |
| 67 | 1.7.4 | 1.7.4 Track progress and send status and cost reports to the Sponsor |  | 9d | 2026-10-13 | 2026-10-23 | 19 | Minh | 72h |
| 68 | 1.7.5 | 1.7.5 Monitor risks and manage change requests |  | 8d | 2026-11-13 | 2026-11-24 | 29 | Minh | 64h |
| 69 | 1.7.6 | 1.7.6 Collect lessons learned and write the final project report |  | 5d | 2026-12-15 | 2026-12-21 | 47 | Minh | 40h |
| 70 | 1.7.7 | 1.7.7 Review the final project report with the Sponsor |  | 1d | 2027-01-08 | 2027-01-08 | 69FS+2d, 60 | Minh | 8h |
| 71 | 1.7.8 | 1.7.8 Revise the final report and close the project |  | 2d | 2027-01-11 | 2027-01-12 | 70 | Minh | 16h |
| 72 | 1.7.9 | 1.7.9 Project closed with Sponsor sign-off (milestone) | milestone | 0d | 2027-01-15 | 2027-01-15 | 71, 62 |  |  |

Notes:
- 65: A-04: assumes the Sponsor reviews the plan during the 2-day lag and approves it on this date.
- 70: A-12: assumes the Sponsor is available for the final report review on this date. Lag 2 days after 1.7.6: the report is sent in advance.
- 72: A-12: assumes the Sponsor signs off the project closure on this date.
